# Pocket Terminal

Schedule from ProjectLibre, 2025-08-29 to 2025-12-29.

## Calendars

- 2025-2026: Mon-Fri 08:00-12:00, 13:00-17:00; Sat-Sun off. Exceptions (off unless hours are given): 2025-09-17 to 2025-09-19, 2025-10-30 to 2025-10-31, 2025-12-07 to 2025-12-08, 2025-12-24 to 2025-12-25.
- Jueves-Viernes 2025-2026: Mon-Fri 08:00-12:00, 13:00-17:00; Sat-Sun off. Exceptions (off unless hours are given): 2025-08-31 to 2025-09-03, 2025-09-07 to 2025-09-10, 2025-09-14 to 2025-09-19, 2025-09-21 to 2025-09-24, 2025-09-28 to 2025-10-01, 2025-10-05 to 2025-10-08, 2025-10-12 to 2025-10-15, 2025-10-19 to 2025-10-22, 2025-10-26 to 2025-10-31, 2025-11-02 to 2025-11-05, 2025-11-09 to 2025-11-12, 2025-11-16 to 2025-11-19, 2025-11-23 to 2025-11-26, 2025-11-30 to 2025-12-03, 2025-12-07 to 2025-12-10, 2025-12-14 to 2025-12-17, 2025-12-21 to 2025-12-25, 2025-12-28 to 2025-12-30.

## Resources

| Resource |
| --- |
| No Asignado |
| Jose Lira |
| Cristobal Calaf |
| Nicolas Selman |
| Rebeka Gallardo |
| Proveedor |
| Ignacio Parragué |

## Schedule

| ID | WBS | Task | Duration | Start | Finish | Predecessors | Complete | Constraint | Calendar | Resources |
| --- | --- | --- | --- | --- | --- | --- | --- | --- | --- | --- |
| 1 | 1 | **MVP Pocket Terminal** | 82d? | 2025-08-29 | 2025-12-29 |  | 30% |  |  |  |
| 2 | 1.1 | **Administrativo** | 24d? | 2025-08-29 | 2025-10-03 |  | 100% |  |  |  |
| 3 | 1.1.1 | Kick-off | 1d | 2025-08-29 | 2025-08-29 |  | 100% | must start on 2025-08-29 | Jueves-Viernes 2025-2026 | Cristobal Calaf; Jose Lira; Nicolas Selman; Rebeka Gallardo |
| 4 | 1.1.2 | Especificación de requerimientos | 1d | 2025-08-29 | 2025-08-29 | 3SS | 100% | start no earlier than 2025-08-29 | Jueves-Viernes 2025-2026 | Cristobal Calaf; Jose Lira; Nicolas Selman; Rebeka Gallardo |
| 5 | 1.1.3 | Diagrama de bloques general | 1d | 2025-09-04 | 2025-09-04 | 4 | 100% |  | Jueves-Viernes 2025-2026 | Cristobal Calaf; Jose Lira; Nicolas Selman; Rebeka Gallardo |
| 6 | 1.1.4 | Definir nombre final del proyecto | 0.25d? | 2025-10-03 | 2025-10-03 | 55FF | 100% |  | Jueves-Viernes 2025-2026 | Cristobal Calaf; Jose Lira; Nicolas Selman; Rebeka Gallardo |
| 8 | 1.2 | **Electrónico** | 67d | 2025-08-29 | 2025-12-04 |  | 46% |  |  |  |
| 9 | 1.2.1 | **Diseño electrónico** | 11d | 2025-08-29 | 2025-09-12 |  | 100% |  |  |  |
| 10 | 1.2.1.1 | Diagrama de bloques electrónico | 1d | 2025-09-05 | 2025-09-05 | 5 | 100% |  | Jueves-Viernes 2025-2026 | Cristobal Calaf; Jose Lira; Nicolas Selman |
| 11 | 1.2.1.2 | Revisión de estado inicial esquemático | 1d | 2025-09-11 | 2025-09-11 | 10 | 100% |  | Jueves-Viernes 2025-2026 | Cristobal Calaf; Jose Lira; Nicolas Selman |
| 12 | 1.2.1.3 | Diseño de circuito de audio | 1d | 2025-08-29 | 2025-08-29 |  | 100% |  | Jueves-Viernes 2025-2026 | Jose Lira; Nicolas Selman |
| 13 | 1.2.1.4 | Diseño de circuito de carga/descarga de baterías | 1d | 2025-09-04 | 2025-09-04 | 12 | 100% |  | Jueves-Viernes 2025-2026 | Jose Lira; Nicolas Selman |
| 14 | 1.2.1.5 | Diseño de circuito de soft latching power | 1d | 2025-09-05 | 2025-09-05 | 13 | 100% |  | Jueves-Viernes 2025-2026 | Jose Lira; Nicolas Selman |
| 15 | 1.2.1.6 | Diseño de circuito de medición de carga de baterías | 1d | 2025-09-11 | 2025-09-11 | 14 | 100% |  | Jueves-Viernes 2025-2026 | Jose Lira; Nicolas Selman |
| 16 | 1.2.1.7 | Revisión final de esquemático/ Revisión Cruzada | 1d | 2025-09-12 | 2025-09-12 | 15 | 100% |  | Jueves-Viernes 2025-2026 | Cristobal Calaf; Jose Lira; Nicolas Selman |
| 17 | 1.2.2 | **PCB** | 7d | 2025-09-25 | 2025-10-03 |  | 100% |  |  |  |
| 18 | 1.2.2.1 | Diseño de PCB | 2d | 2025-09-25 | 2025-09-26 | 9 | 100% |  | Jueves-Viernes 2025-2026 | Jose Lira; Nicolas Selman |
| 19 | 1.2.2.2 | Revisión de PCB | 1d | 2025-10-02 | 2025-10-02 | 18 | 100% |  | Jueves-Viernes 2025-2026 | Cristobal Calaf; Jose Lira; Nicolas Selman |
| 20 | 1.2.2.3 | Crear BOM | 1d | 2025-10-03 | 2025-10-03 | 19 | 100% |  | Jueves-Viernes 2025-2026 | Jose Lira; Nicolas Selman |
| 21 | 1.2.2.4 | Crear Gerber | 1d | 2025-10-03 | 2025-10-03 | 20SS | 100% |  | Jueves-Viernes 2025-2026 | Jose Lira; Nicolas Selman |
| 22 | 1.2.3 | **Fabricación** | 18d | 2025-10-09 | 2025-11-04 |  | 26% | start no earlier than 2025-10-02 |  |  |
| 23 | 1.2.3.1 | Cotizar componentes | 1d | 2025-10-09 | 2025-10-09 | 17 | 100% | start no earlier than 2025-10-02 | Jueves-Viernes 2025-2026 | Jose Lira; Nicolas Selman |
| 24 | 1.2.3.2 | Comprar componentes | 1d | 2025-10-10 | 2025-10-10 | 23 | 100% |  | Jueves-Viernes 2025-2026 | Jose Lira; Nicolas Selman |
| 25 | 1.2.3.3 | Envío de componentes | 10d | 2025-10-16 | 2025-10-29 | 24 |  |  |  | Proveedor |
| 26 | 1.2.3.4 | Cotizar PCB final | 1d | 2025-10-09 | 2025-10-09 | 17 | 100% |  | Jueves-Viernes 2025-2026 | Jose Lira; Nicolas Selman |
| 27 | 1.2.3.5 | Pagar fabricación PCB final | 1d | 2025-10-10 | 2025-10-10 | 26 | 100% |  | Jueves-Viernes 2025-2026 | Jose Lira; Nicolas Selman |
| 28 | 1.2.3.6 | Fabricación de PCB final | 3d | 2025-10-16 | 2025-10-20 | 27 |  |  |  | Proveedor |
| 29 | 1.2.3.7 | Envío de PCB | 10d | 2025-10-21 | 2025-11-04 | 28 |  |  |  | Proveedor |

| ID | WBS | Task | Duration | Start | Finish | Predecessors | Complete | Constraint | Calendar | Resources |
| --- | --- | --- | --- | --- | --- | --- | --- | --- | --- | --- |
| 30 | 1.2.4 | **Ensamble y pruebas** | 17d | 2025-11-05 | 2025-11-27 |  |  |  |  |  |
| 31 | 1.2.4.1 | Circuito de carga/descarga | 1d | 2025-11-05 | 2025-11-06 | 22 |  |  | Jueves-Viernes 2025-2026 | Jose Lira; Nicolas Selman |
| 32 | 1.2.4.2 | Circuito de medición de carga | 1d | 2025-11-07 | 2025-11-07 | 31 |  |  | Jueves-Viernes 2025-2026 | Jose Lira; Nicolas Selman |
| 33 | 1.2.4.3 | Soft latching power | 1d | 2025-11-13 | 2025-11-13 | 32 |  |  | Jueves-Viernes 2025-2026 | Jose Lira; Nicolas Selman |
| 34 | 1.2.4.4 | Conexión Luckfox Lyra | 1d | 2025-11-14 | 2025-11-14 | 33 |  |  | Jueves-Viernes 2025-2026 | Jose Lira; Nicolas Selman |
| 35 | 1.2.4.5 | RP2040 | 1d | 2025-11-20 | 2025-11-20 | 34 |  |  | Jueves-Viernes 2025-2026 | Jose Lira; Nicolas Selman |
| 36 | 1.2.4.6 | Circuito de audio | 1d | 2025-11-21 | 2025-11-21 | 35 |  |  | Jueves-Viernes 2025-2026 | Jose Lira; Nicolas Selman |
| 37 | 1.2.4.7 | Pantalla | 1d | 2025-11-27 | 2025-11-27 | 36 |  |  | Jueves-Viernes 2025-2026 | Jose Lira; Nicolas Selman |
| 38 | 1.2.5 | Correcciones de hardware | 2d | 2025-11-28 | 2025-12-04 | 30 |  |  | Jueves-Viernes 2025-2026 | Cristobal Calaf; Jose Lira; Nicolas Selman |
| 40 | 1.3 | **Firmware** | 71d? | 2025-08-29 | 2025-12-11 |  |  |  |  |  |
| 41 | 1.3.1 | **Luckfox Lyra** | 71d? | 2025-08-29 | 2025-12-11 |  |  |  |  |  |
| 42 | 1.3.1.1 | Cargar Linux OS | 2d | 2025-10-09 | 2025-10-10 |  |  | start no earlier than 2025-10-09 | Jueves-Viernes 2025-2026 | Jose Lira |
| 43 | 1.3.1.2 | Inducción Drivers Linux | 1d? | 2025-08-29 | 2025-08-29 |  |  |  |  | Jose Lira |
| 44 | 1.3.1.3 | Drivers teclado | 3d | 2025-10-16 | 2025-10-23 | 42 |  |  | Jueves-Viernes 2025-2026 |  |
| 45 | 1.3.1.4 | Drivers pantalla | 2d | 2025-10-24 | 2025-10-30 | 44 |  |  | Jueves-Viernes 2025-2026 | Cristobal Calaf; Jose Lira; Nicolas Selman |
| 46 | 1.3.1.5 | Drivers audio | 2d | 2025-12-05 | 2025-12-11 | 51 |  |  | Jueves-Viernes 2025-2026 | Cristobal Calaf; Jose Lira; Nicolas Selman |
| 47 | 1.3.2 | **RP2040** | 67d? | 2025-08-29 | 2025-12-04 |  |  |  |  |  |
| 48 | 1.3.2.1 | LED RGB | 1d? | 2025-08-29 | 2025-08-29 |  |  |  |  |  |
| 49 | 1.3.2.2 | Firmware de teclas | 4d | 2025-10-09 | 2025-10-17 |  |  | start no earlier than 2025-10-09 | Jueves-Viernes 2025-2026 | Cristobal Calaf; Jose Lira; Nicolas Selman |
| 50 | 1.3.2.3 | Sistema de encendido/apagado | 1.33d | 2025-11-28 | 2025-12-04 | 30 |  |  | Jueves-Viernes 2025-2026 | Cristobal Calaf; Jose Lira; Nicolas Selman |
| 51 | 1.3.2.4 | Medición de carga de baterías | 0.67d | 2025-12-04 | 2025-12-04 | 50 |  |  | Jueves-Viernes 2025-2026 | Cristobal Calaf; Jose Lira; Nicolas Selman |
| 53 | 1.4 | **Diseño/Mecánica** | 71d | 2025-09-05 | 2025-12-18 |  | 13% |  |  |  |
| 54 | 1.4.1 | Revisión del estado actual del diseño | 3d | 2025-09-05 | 2025-09-12 | 5 | 100% |  | Jueves-Viernes 2025-2026 | Cristobal Calaf; Rebeka Gallardo |
| 55 | 1.4.2 | Desarrollo conceptual nueva carcasa | 4d | 2025-10-03 | 2025-10-16 | 54 |  | start no earlier than 2025-10-03 | Jueves-Viernes 2025-2026 | Cristobal Calaf; Rebeka Gallardo |
| 56 | 1.4.3 | Ajustar mecánica de las teclas | 3d | 2025-10-17 | 2025-10-24 | 55 |  |  | Jueves-Viernes 2025-2026 | Cristobal Calaf; Rebeka Gallardo |
| 57 | 1.4.4 | Ajustar diseño carcasa | 3d | 2025-10-30 | 2025-11-07 | 56 |  |  | Jueves-Viernes 2025-2026 | Cristobal Calaf; Rebeka Gallardo |
| 58 | 1.4.5 | Diseño de anclaje | 3d | 2025-11-13 | 2025-11-20 | 57 |  |  | Jueves-Viernes 2025-2026 | Cristobal Calaf; Rebeka Gallardo |
| 59 | 1.4.6 | Revisión cruzada | 2d | 2025-11-21 | 2025-11-27 | 58 |  |  | Jueves-Viernes 2025-2026 | Cristobal Calaf; Jose Lira; Rebeka Gallardo |

| ID | WBS | Task | Duration | Start | Finish | Predecessors | Calendar | Resources |
| --- | --- | --- | --- | --- | --- | --- | --- | --- |
| 60 | 1.4.7 | **Impresión 3D** | 14d | 2025-11-28 | 2025-12-18 |  |  |  |
| 61 | 1.4.7.1 | Ajuste márgenes para Impresión 3D | 1d | 2025-11-28 | 2025-11-28 | 59 | Jueves-Viernes 2025-2026 | Cristobal Calaf; Jose Lira; Rebeka Gallardo |
| 62 | 1.4.7.2 | Impresión de carcasa | 2d | 2025-12-04 | 2025-12-05 | 61 | Jueves-Viernes 2025-2026 | Jose Lira |
| 63 | 1.4.7.3 | Impresión de keycaps | 3d | 2025-12-11 | 2025-12-18 | 62 | Jueves-Viernes 2025-2026 | Jose Lira |
| 65 | 1.5 | **Integración** | 6d | 2025-12-19 | 2025-12-29 |  |  |  |
| 66 | 1.5.1 | Ensamble Final | 1d | 2025-12-19 | 2025-12-19 | 8, 53 | Jueves-Viernes 2025-2026 | Cristobal Calaf; Jose Lira; Nicolas Selman; Rebeka Gallardo |
| 67 | 1.5.2 | Programar Juego en Pico-8 | 2d | 2025-12-26 | 2025-12-29 | 40, 66 |  | Ignacio Parragué |
| 69 | 1.6 | Material Educativo Bit-0 | 1d? | 2025-08-29 | 2025-08-29 |  |  |  |
